# LR1

Schedule from MS Project, 2024-03-01 to 2024-09-17, status date 2024-04-26, costs in ₽, A marks actual dates.
Команда разработчиков из 16 человек занимается созданием карты города на основе собственного модуля отображения. Проект должен быть завершен в течение 6 месяцев. Бюджет проекта: 50 000 рублей.

## Calendars

- Standard: Mon-Fri 08:00-12:00, 13:00-17:00; Sat-Sun off. Exceptions (off unless hours are given): 2024-03-07 09:00-12:00, 13:00-17:00 (7 марта - короткий день), 2024-03-08 (8 марта), 2024-04-27 09:00-12:00, 13:00-18:00 (27 апреля - рабочий день), 2024-04-29 to 2024-05-01 (1 мая), 2024-05-08 09:00-12:00, 13:00-17:00 (8 мая - короткий день), 2024-05-09 to 2024-05-10 (9 мая), 2024-06-11 09:00-12:00, 13:00-17:00 (11 июня - короткий день), 2024-06-12 (12 июня).

## Resources

| Resource | Group | Rate | Cost per use |
| --- | --- | --- | --- |
| Ведущий программист | Программирование | 10 | 100 |
| Программист 1 | Программирование | 7 | 50 |
| Программист 2 | Программирование | 7 | 50 |
| Программист 3 | Программирование | 7 | 50 |
| Системный аналитик | Анализ | 7 | 300 |
| Художник-дизайнер | Дизайн | 20 | 70 |
| Технический писатель | Документация | 8 | 20 |
| Web-дизайнер | Internet | 5 | 50 |
| 3D аниматор | Дизайн | 7 | 70 |
| Мультимедиа-корреспондент | М-медиа | 8 | 20 |
| Наборщик данных 1 | Ввод данных | 3 | 10 |
| Наборщик данных 2 | Ввод данных | 2 | 10 |
| Наборщик данных 3 | Ввод данных | 2 | 10 |
| Наборщик данных 4 | Ввод данных | 2 | 10 |
| Наборщик данных 5 | Ввод данных | 2 | 10 |
| Программист 4 | Программирование | 2 | 10 |
| Сервер |  | 2 |  |
| Наборщик данных 6 |  | 2 | 10 |
| Наборщик данных 7 |  | 2 | 10 |
| Наборщик данных 8 |  | 2 | 10 |
| Наборщик данных 9 |  | 2 | 10 |
| Наборщик данных 10 |  | 2 | 10 |
| Программист 1 (замена) |  | 7.35 |  |

## Schedule

| ID | WBS | Task | Type | Duration | Start | Finish | Predecessors | Complete | Remaining | Baseline start | Baseline finish | Baseline duration | Total slack | Free slack | Resources | Work | Actual work | Cost | Baseline cost | Actual cost |
| --- | --- | --- | --- | --- | --- | --- | --- | --- | --- | --- | --- | --- | --- | --- | --- | --- | --- | --- | --- | --- |
| 1 | 1 | Начало проекта | milestone | 0w | 2024-03-01 09:00 | 2024-03-01 09:00 |  |  |  | 2024-03-01 09:00 | 2024-03-01 09:00 | 0w | 4.75d | 0d |  |  |  |  |  |  |
| 2 | 2 | **Создание интерфейса** |  | 103.82d | 2024-03-01 09:00 A | 2024-08-02 10:32 | 1 | 38% | 63.96d | 2024-03-01 09:00 | 2024-06-28 08:33 | 78.57d | 0d |  |  | 560h | 120h | 6,521 | 6,550 | 1,360 |
| 3 | 2.1 | **Разработка дизайна интерфейса** |  | 35.75d | 2024-03-01 09:00 A | 2024-04-22 18:00 |  | 45% | 19.75d | 2024-03-01 09:00 | 2024-04-08 16:00 | 25.62d | 60.57d | 0d |  | 320h | 120h | 4,010 | 4,010 | 980 |
| 4 | 2.1.1 | Разработка 2D графических элементов |  | 3w | 2024-03-01 09:00 | 2024-03-25 14:00 |  |  |  | 2024-03-01 09:00 | 2024-03-25 14:00 | 3w | 4.75d |  | Художник-дизайнер | 120h |  | 2,470 | 2,470 |  |
| 5 | 2.1.2 | Разработка 3D графических элементов |  | 2w | 2024-03-08 09:00 A | 2024-03-25 11:00 | 4SS |  | 2w | 2024-03-01 09:00 | 2024-03-18 12:00 | 2w | 81.19d |  | 3D аниматор | 80h |  | 630 | 630 | 70 |
| 6 | 2.1.3 | Создание заставки |  | 4.05w | 2024-03-25 11:00 A | 2024-04-22 18:00 A | 5 | 100% |  | 2024-03-18 13:00 | 2024-04-08 16:00 | 3w |  |  | 3D аниматор | 120h | 120h | 910 | 910 | 910 |
| 7 | 2.2 | Программирование интерфейса |  | 1.5w | 2024-07-23 15:32 | 2024-08-02 10:32 | 3, 12 |  |  | 2024-06-18 13:33 | 2024-06-28 08:33 | 1.5w | 0d |  | Программист 3; Программист 4; Программист 2; Программист 1 (замена) | 240h |  | 1,511 | 1,540 |  |
| 8 | 3 | **Построение базы объектов** |  | 63.35d | 2024-03-25 14:00 A | 2024-06-28 09:47 |  | 22% | 49.53d | 2024-03-25 14:00 | 2024-06-18 09:00 | 55.25d | 56.84d |  | Сервер | 4995.79h | 636h | 13,170.13 | 12,210 | 2,088.2 |
| 9 | 3.1 | Анализ и построение структуры базы объектов |  | 2w | 2024-03-25 14:00 | 2024-04-08 16:00 |  |  |  | 2024-03-25 14:00 | 2024-04-08 16:00 | 2w | 20.1d | 0d | Системный аналитик | 80h |  | 916 | 860 |  |
| 10 | 3.2 | Программирование средств обработки базы объектов |  | 3w | 2024-04-08 16:00 A | 2024-05-16 08:47 | 9 | 80% | 0.6w | 2024-04-08 16:00 | 2024-04-27 17:00 | 3w | 56.84d | 0d | Программист 3; Программист 4 | 240h | 192h | 1,140 | 1,140 | 924 |
| 11 | 3.3 | Наполнение базы объектов |  | 6w | 2024-05-16 08:47 | 2024-06-28 09:47 | 10 |  |  | 2024-04-27 17:00 | 2024-06-18 09:00 | 6w | 58.03d |  | Наборщик данных 1; Наборщик данных 2; Наборщик данных 3; Наборщик данных 4; Наборщик данных 5; Наборщик данных 6; Наборщик данных 7; Наборщик данных 8; Наборщик данных 9; Наборщик данных 10 | 2400h |  | 5,140 | 5,140 |  |
| 12 | 4 | **Создание ядра GIS** |  | 96.32d | 2024-03-01 09:00 | 2024-07-23 15:32 |  |  |  | 2024-03-01 09:00 | 2024-06-18 13:33 | 71.07d | 0d |  |  | 1880h |  | 14,850.42 | 14,817.56 |  |
| 13 | 4.1 | Анализ и проектирование ядра |  | 4.95w | 2024-03-01 09:00 | 2024-04-22 16:00 |  |  |  | 2024-03-01 09:00 | 2024-03-25 14:00 | 3w | 0d |  | Системный аналитик; Ведущий программист | 240h |  | 2,498.1 | 2,440 |  |
| 14 | 4.2 | Создание модели ядра |  | 2.47w | 2024-04-22 16:00 | 2024-05-20 08:47 | 13 |  |  | 2024-03-25 14:00 | 2024-04-08 14:49 | 2.02w | 0d |  | Ведущий программист; Программист 2; Программист 3; Программист 4; Программист 1 (замена) | 400h |  | 2,870.1 | 2,892.52 |  |
| 15 | 4.3 | Тестирование модели ядра |  | 1w | 2024-05-20 08:47 | 2024-05-27 08:47 | 14 |  |  | 2024-04-08 14:49 | 2024-04-15 14:49 | 1w | 0d |  | Программист 1 (замена) | 40h |  | 294 | 330 |  |
| 16 | 4.4 | Создание рабочей версии ядра |  | 8.12w | 2024-05-27 08:47 | 2024-07-23 15:32 | 15 |  |  | 2024-04-15 14:49 | 2024-06-18 13:33 | 8.12w | 0d |  | Ведущий программист; Программист 2; Программист 3; Программист 4; Программист 1 (замена) | 1200h |  | 8,188.21 | 8,155.05 |  |
| 17 | 5 | Создание мультимедиа – наполнения |  | 6w | 2024-04-23 08:00 | 2024-06-13 09:00 | 3 |  |  | 2024-04-08 16:00 | 2024-05-27 16:00 | 6w | 67.94d |  | Мультимедиа-корреспондент | 240h |  | 1,940 | 1,940 |  |
| 18 | 6 | Создание справочной системы |  | 2w | 2024-08-14 08:00 | 2024-08-28 12:00 | 7 |  |  | 2024-07-10 08:00 | 2024-07-24 12:00 | 2w | 13.57d |  | Технический писатель | 80h |  | 660 | 660 |  |
| 19 | 7 | **Создание руководства пользователя** |  | 17.75d | 2024-07-19 10:32 | 2024-08-14 08:32 | 7FS-10d |  |  | 2024-06-14 08:33 | 2024-07-09 15:33 | 17.75d | 0d |  |  | 160h |  | 1,850 | 1,850 |  |
| 20 | 7.1 | Разработка дизайна руководства |  | 1w | 2024-07-19 10:32 | 2024-08-09 13:32 |  |  |  | 2024-06-14 08:33 | 2024-07-05 10:33 | 1w | 0d |  | Художник-дизайнер | 40h |  | 870 | 870 |  |
| 21 | 7.2 | Написание руководства пользователя |  | 3w | 2024-07-23 10:32 | 2024-08-14 08:32 | 20SS+2d |  |  | 2024-06-18 08:33 | 2024-07-09 15:33 | 3w | 0d |  | Технический писатель | 120h |  | 980 | 980 |  |
| 22 | 8 | **Создание web – сайта и поддержка** |  | 23.88d | 2024-07-23 10:32 | 2024-08-26 09:32 |  |  |  | 2024-06-18 08:33 | 2024-07-19 16:33 | 23.88d | 0d |  |  | 248h |  | 2,210 | 2,210 |  |
| 23 | 8.1 | Разработка структуры сайта |  | 1d | 2024-07-23 10:32 | 2024-07-24 10:32 | 21SS |  |  | 2024-06-18 08:33 | 2024-06-19 08:33 | 1d | 0d |  | Web-дизайнер | 8h |  | 90 | 90 |  |
| 24 | 8.2 | Разработка дизайна сайта |  | 1.38w | 2024-07-24 10:32 | 2024-08-02 11:32 | 23 |  |  | 2024-06-19 08:33 | 2024-06-28 09:33 | 1.38w | 0d |  | Web-дизайнер; Художник-дизайнер; 3D аниматор | 120h |  | 1,470 | 1,470 |  |
| 25 | 8.3 | Наполнение сайта |  | 3w | 2024-08-02 11:32 | 2024-08-26 09:32 | 24 |  |  | 2024-06-28 09:33 | 2024-07-19 16:33 | 3w | 0d |  | Web-дизайнер | 120h |  | 650 | 650 |  |
| 26 | 9 | Тестирование сайта |  | 4.17w | 2024-08-19 09:32 | 2024-09-17 08:32 | 22FS-1w |  |  | 2024-07-12 16:33 | 2024-08-12 15:33 | 4.17w | 0d |  | Ведущий программист; Программист 2; Программист 1 (замена) | 480h |  | 4,046 | 4,040 |  |
| 27 | 10 | Сдача сайта в эксплуатацию | milestone | 0w | 2024-09-17 08:32 | 2024-09-17 08:32 | 26 |  |  | 2024-08-12 15:33 | 2024-08-12 15:33 | 0w | 0d |  |  |  |  |  |  |  |

| ID | WBS | Task | Type | Duration | Start | Finish | Baseline start | Baseline finish | Baseline duration | Constraint | Resources | Work | Cost | Baseline cost |
| --- | --- | --- | --- | --- | --- | --- | --- | --- | --- | --- | --- | --- | --- | --- |
| 28 | 11 | **Совещание** |  | 122.62d | 2024-03-06 09:00 | 2024-09-01 18:00 | 2024-03-06 09:00 | 2024-09-18 10:00 | 133.75d? |  |  | 159h | 1,481 | 1,495 |
| 29 | 11.1 | Совещание 1 | manual | 1h | 2024-03-06 09:00 | 2024-03-06 10:00 | 2024-03-06 09:00 | 2024-03-06 10:00 | 1h | start no earlier than 2024-03-06 09:00 | 3D аниматор; Web-дизайнер; Ведущий программист; Мультимедиа-корреспондент; Художник-дизайнер; Технический писатель; Системный аналитик | 7h | 65 | 65 |
| 30 | 11.2 | Совещание 2 | manual | 1h | 2024-03-13 09:00 | 2024-03-13 10:00 | 2024-03-13 09:00 | 2024-03-13 10:00 | 1h | start no earlier than 2024-03-13 09:00 | 3D аниматор; Web-дизайнер; Ведущий программист; Мультимедиа-корреспондент; Художник-дизайнер; Технический писатель | 6h | 58 | 65 |
| 31 | 11.3 | Совещание 3 | manual | 1h | 2024-03-20 09:00 | 2024-03-20 10:00 | 2024-03-20 09:00 | 2024-03-20 10:00 | 1h | start no earlier than 2024-03-20 09:00 | 3D аниматор; Web-дизайнер; Ведущий программист; Мультимедиа-корреспондент; Художник-дизайнер; Технический писатель | 6h | 58 | 65 |
| 32 | 11.4 | Совещание 4 | manual | 1h | 2024-03-27 09:00 | 2024-03-27 10:00 | 2024-03-27 09:00 | 2024-03-27 10:00 | 1h | start no earlier than 2024-03-27 09:00 | 3D аниматор; Web-дизайнер; Ведущий программист; Мультимедиа-корреспондент; Художник-дизайнер; Технический писатель; Системный аналитик | 7h | 65 | 65 |
| 33 | 11.5 | Совещание 5 | manual | 1h | 2024-04-03 09:00 | 2024-04-03 10:00 | 2024-04-03 09:00 | 2024-04-03 10:00 | 1h | start no earlier than 2024-04-03 09:00 | 3D аниматор; Web-дизайнер; Ведущий программист; Мультимедиа-корреспондент; Художник-дизайнер; Технический писатель; Системный аналитик | 7h | 65 | 65 |
| 34 | 11.6 | Совещание 6 | manual | 1h | 2024-04-10 09:00 | 2024-04-10 10:00 | 2024-04-10 09:00 | 2024-04-10 10:00 | 1h | start no earlier than 2024-04-10 09:00 | 3D аниматор; Web-дизайнер; Ведущий программист; Мультимедиа-корреспондент; Художник-дизайнер; Технический писатель; Системный аналитик | 7h | 65 | 65 |
| 35 | 11.7 | Совещание 7 | manual | 1h | 2024-04-17 09:00 | 2024-04-17 10:00 | 2024-04-17 09:00 | 2024-04-17 10:00 | 1h | start no earlier than 2024-04-17 09:00 | 3D аниматор; Web-дизайнер; Ведущий программист; Мультимедиа-корреспондент; Художник-дизайнер; Технический писатель; Системный аналитик | 7h | 65 | 65 |
| 36 | 11.8 | Совещание 8 | manual | 1h | 2024-04-24 09:00 | 2024-04-24 10:00 | 2024-04-24 09:00 | 2024-04-24 10:00 | 1h | start no earlier than 2024-04-24 09:00 | 3D аниматор; Web-дизайнер; Ведущий программист; Мультимедиа-корреспондент; Художник-дизайнер; Технический писатель; Системный аналитик | 7h | 65 | 65 |
| 37 | 11.9 | Совещание 9 | manual | 1h | 2024-05-02 08:00 | 2024-05-02 09:00 | 2024-05-02 08:00 | 2024-05-02 09:00 | 1h | start no earlier than 2024-05-01 09:00 | 3D аниматор; Web-дизайнер; Ведущий программист; Мультимедиа-корреспондент; Художник-дизайнер; Технический писатель; Системный аналитик | 7h | 65 | 65 |
| 38 | 11.10 | Совещание 10 | manual | 1h | 2024-05-08 09:00 | 2024-05-08 10:00 | 2024-05-08 09:00 | 2024-05-08 10:00 | 1h | start no earlier than 2024-05-08 09:00 | 3D аниматор; Web-дизайнер; Ведущий программист; Мультимедиа-корреспондент; Художник-дизайнер; Технический писатель; Системный аналитик | 7h | 65 | 65 |
| 39 | 11.11 | Совещание 11 | manual | 1h | 2024-05-15 09:00 | 2024-05-15 10:00 | 2024-05-15 09:00 | 2024-05-15 10:00 | 1h | start no earlier than 2024-05-15 09:00 | 3D аниматор; Web-дизайнер; Ведущий программист; Мультимедиа-корреспондент; Художник-дизайнер; Технический писатель; Системный аналитик | 7h | 65 | 65 |
| 40 | 11.12 | Совещание 12 | manual | 1h | 2024-05-22 09:00 | 2024-05-22 10:00 | 2024-05-22 09:00 | 2024-05-22 10:00 | 1h | start no earlier than 2024-05-22 09:00 | 3D аниматор; Web-дизайнер; Ведущий программист; Мультимедиа-корреспондент; Художник-дизайнер; Технический писатель; Системный аналитик | 7h | 65 | 65 |
| 41 | 11.13 | Совещание 13 | manual | 1h | 2024-05-29 09:00 | 2024-05-29 10:00 | 2024-05-29 09:00 | 2024-05-29 10:00 | 1h | start no earlier than 2024-05-29 09:00 | 3D аниматор; Web-дизайнер; Ведущий программист; Мультимедиа-корреспондент; Художник-дизайнер; Технический писатель; Системный аналитик | 7h | 65 | 65 |
| 42 | 11.14 | Совещание 14 | manual | 1h | 2024-06-05 09:00 | 2024-06-05 10:00 | 2024-06-05 09:00 | 2024-06-05 10:00 | 1h | start no earlier than 2024-06-05 09:00 | 3D аниматор; Web-дизайнер; Ведущий программист; Мультимедиа-корреспондент; Художник-дизайнер; Технический писатель; Системный аналитик | 7h | 65 | 65 |
| 43 | 11.15 | Совещание 15 | manual | 1h | 2024-06-13 08:00 | 2024-06-13 09:00 | 2024-06-13 08:00 | 2024-06-13 09:00 | 1h | start no earlier than 2024-06-12 09:00 | 3D аниматор; Web-дизайнер; Ведущий программист; Мультимедиа-корреспондент; Художник-дизайнер; Технический писатель; Системный аналитик | 7h | 65 | 65 |
| 44 | 11.16 | Совещание 16 | manual | 1h | 2024-06-19 09:00 | 2024-06-19 10:00 | 2024-06-19 09:00 | 2024-06-19 10:00 | 1h | start no earlier than 2024-06-19 09:00 | 3D аниматор; Web-дизайнер; Ведущий программист; Мультимедиа-корреспондент; Художник-дизайнер; Технический писатель; Системный аналитик | 7h | 65 | 65 |
| 45 | 11.17 | Совещание 17 | manual | 1h | 2024-06-26 09:00 | 2024-06-26 10:00 | 2024-06-26 09:00 | 2024-06-26 10:00 | 1h | start no earlier than 2024-06-26 09:00 | 3D аниматор; Web-дизайнер; Ведущий программист; Мультимедиа-корреспондент; Художник-дизайнер; Технический писатель; Системный аналитик | 7h | 65 | 65 |
| 46 | 11.18 | Совещание 18 | manual | 1h | 2024-07-03 09:00 | 2024-07-03 10:00 | 2024-07-03 09:00 | 2024-07-03 10:00 | 1h | start no earlier than 2024-07-03 09:00 | 3D аниматор; Web-дизайнер; Ведущий программист; Мультимедиа-корреспондент; Художник-дизайнер; Технический писатель; Системный аналитик | 7h | 65 | 65 |
| 47 | 11.19 | Совещание 19 | manual | 1h | 2024-07-10 09:00 | 2024-07-10 10:00 | 2024-07-10 09:00 | 2024-07-10 10:00 | 1h | start no earlier than 2024-07-10 09:00 | 3D аниматор; Web-дизайнер; Ведущий программист; Мультимедиа-корреспондент; Художник-дизайнер; Технический писатель; Системный аналитик | 7h | 65 | 65 |
| 48 | 11.20 | Совещание 20 | manual | 1h | 2024-07-17 09:00 | 2024-07-17 10:00 | 2024-07-17 09:00 | 2024-07-17 10:00 | 1h | start no earlier than 2024-07-17 09:00 | 3D аниматор; Web-дизайнер; Ведущий программист; Мультимедиа-корреспондент; Художник-дизайнер; Технический писатель; Системный аналитик | 7h | 65 | 65 |
| 49 | 11.21 | Совещание 21 | manual | 1h | 2024-07-24 09:00 | 2024-07-24 10:00 | 2024-07-24 09:00 | 2024-07-24 10:00 | 1h | start no earlier than 2024-07-24 09:00 | 3D аниматор; Web-дизайнер; Ведущий программист; Мультимедиа-корреспондент; Художник-дизайнер; Технический писатель; Системный аналитик | 7h | 65 | 65 |
| 50 | 11.22 | Совещание 22 | manual | 1h | 2024-07-31 09:00 | 2024-07-31 10:00 | 2024-07-31 09:00 | 2024-07-31 10:00 | 1h | start no earlier than 2024-07-31 09:00 | 3D аниматор; Web-дизайнер; Ведущий программист; Мультимедиа-корреспондент; Художник-дизайнер; Технический писатель; Системный аналитик | 7h | 65 | 65 |
| 51 | 11.23 | Совещание 23 | manual | 1h | 2024-08-07 09:00 | 2024-08-07 10:00 | 2024-08-07 09:00 | 2024-08-07 10:00 | 1h | start no earlier than 2024-08-07 09:00 | 3D аниматор; Web-дизайнер; Ведущий программист; Мультимедиа-корреспондент; Художник-дизайнер; Технический писатель; Системный аналитик | 7h | 65 | 65 |
